# Estimativas

Schedule from MS Project, 2013-09-02 to 2013-11-05, 3 hours a day, costs in R$.

## Calendars

- Calendario projeto: Mon-Fri 09:00-12:00, 13:00-18:00; Sat-Sun off. Exceptions (off unless hours are given): 2013-09-02 to 2013-09-06 19:00-22:00, 2013-09-07 to 2013-09-08 08:00-12:00, 2013-09-09 to 2013-09-13 19:00-22:00, 2013-09-14 to 2013-09-15 08:00-12:00, 2013-09-16 to 2013-09-20 19:00-22:00, 2013-09-21 to 2013-09-22 08:00-12:00, 2013-09-23 to 2013-09-27 19:00-22:00, 2013-09-28 to 2013-09-29 08:00-12:00, 2013-09-30 to 2013-10-04 19:00-22:00, 2013-10-05 to 2013-10-06 08:00-12:00, 2013-10-07 to 2013-10-11 19:00-22:00, 2013-10-12 to 2013-10-13 08:00-12:00, 2013-10-14 to 2013-10-18 19:00-22:00, 2013-10-19 to 2013-10-20 08:00-12:00, 2013-10-21 to 2013-10-25 19:00-22:00, 2013-10-26 to 2013-10-27 08:00-12:00, 2013-10-28 to 2013-10-31 19:00-22:00.

## Resources

| Resource | Rate |
| --- | --- |
| Hermes | 25 |
| Mauro | 25 |
| Chrisley | 25 |

## Schedule

| ID | Task | Duration | Start | Finish | Predecessors | Total slack | Free slack | Constraint | Resources | Work | Cost |
| --- | --- | --- | --- | --- | --- | --- | --- | --- | --- | --- | --- |
| 1 | Cadastro de usuários | 30h? | 2013-09-02 | 2013-09-11 |  | 61.67d |  |  | Hermes | 30h | 750 |
| 2 | Cadastro de clientes | 50h? | 2013-09-02 | 2013-09-17 |  | 0d |  |  | Hermes | 50h | 1,250 |
| 3 | Cadastro de procuradores | 25h? | 2013-09-02 | 2013-09-09 |  | 63.33d |  |  | Mauro | 25h | 625 |
| 4 | Cadastro de procedimentos internos | 20h? | 2013-09-02 | 2013-09-08 |  | 23.33d | 0d |  | Chrisley | 20h | 500 |
| 5 | Cadastro de marcas | 50h? | 2013-09-17 | 2013-10-02 | 2 | 0d |  | start no earlier than 2013-09-02 | Mauro | 50h | 1,250 |
| 6 | Cadastro de empresa | 30h? | 2013-09-02 | 2013-09-11 |  | 30.67d | 0d | start no earlier than 2013-09-02 | Hermes | 30h | 750 |
| 7 | Configurações do sistema | 20h? | 2013-09-08 | 2013-09-14 | 4 | 23.33d | 0d |  | Chrisley | 20h | 500 |
| 8 | Motor para tarefas agendadas | 30h? | 2013-09-11 | 2013-09-20 | 6 | 30.67d | 0d |  | Hermes | 30h | 750 |
| 9 | Scripts para backup do Banco de dados | 3h? | 2013-09-20 | 2013-09-21 | 8 | 30.67d | 0d |  | Hermes | 3h | 75 |
| 10 | Relatório de Processos com Registro Concedido | 20h? | 2013-10-10 | 2013-10-16 | 17 | 23.33d |  |  | Chrisley | 20h | 500 |
| 11 | Relatório de Processos de Marcas | 20h? | 2013-10-19 | 2013-10-25 | 15 | 13.33d |  |  | Mauro | 20h | 500 |
| 12 | Relatório de etiquetas de clientes | 20h? | 2013-10-03 | 2013-10-09 | 13 | 30.67d |  |  | Hermes | 20h | 500 |
| 13 | Cadastro de Layout de Revista de Patentes | 40h? | 2013-09-21 | 2013-10-03 | 9 | 30.67d | 0d |  | Hermes | 40h | 1,000 |
| 14 | Conferência de processos / Revista de Marcas | 60h? | 2013-10-19 | 2013-11-05 | 15 | 0d |  |  | Mauro | 60h | 1,500 |
| 15 | Cadastro de publicações de marca | 20h? | 2013-10-13 | 2013-10-19 | 16 | 0d |  |  | Mauro | 20h | 500 |
| 16 | Acompanhamento de processos | 35h? | 2013-10-02 | 2013-10-13 | 5 | 0d |  |  | Mauro | 35h | 875 |
| 17 | Manutenção de processos de patentes | 85h? | 2013-09-14 | 2013-10-10 | 7 | 23.33d | 0d |  | Chrisley | 85h | 2,125 |
